# Gantt AY Contingencia 2

Schedule from MS Project, 2015-04-12 to 2016-03-18, status date 2015-06-07, 24 hours a day, A marks actual dates.

## Calendars

- AsociateYa: Mon-Fri 09:00-13:00, 15:00-19:00; Sat-Sun off.
- AsociateYaContingencia: Mon-Fri 09:00-13:00, 15:00-19:00; Sat-Sun off.
- AsociateYa Febrero: Mon-Fri 09:00-13:00, 15:00-19:00; Sat-Sun off.
- AsociateYa Enero: Mon-Fri 09:00-13:00, 15:00-19:00; Sat-Sun off.

## Resources

| Resource | Group |
| --- | --- |
| Tiberti-ANALISTA FUNCIONAL | ANALISTA FUNCIONAL |
| Budic-PROJECT MANAGER | PROJECT MANAGER |
| Tiberti-ADMINISTRADOR DE BASE DE DATOS | ADMINISTRADOR DE BASE DE DATOS |
| Tiberti-DESAROLLADOR | DESAROLLADOR |
| Budic-TESTER | TESTER |
| Croci-DISEÑADOR DE EXPERIENCIA DE USUARIO | DISEÑADOR DE EXPERIENCIA DE USUARIO |
| Rodriguez-ARQUITECTO DE SOFTWARE | ARQUITECTO DE SOFTWARE |
| Tiberti-ADMINISTRADOR DEL ENTORNO DE DESARROLLO | ADMINISTRADOR DEL ENTORNO DE DESARROLLO |
| Croci-DESAROLLADOR | DESAROLLADOR |
| Budic-DESAROLLADOR | DESAROLLADOR |
| Rodriguez-DESAROLLADOR | DESAROLLADOR |
| Budic-ANALISTA FUNCIONAL | ANALISTA FUNCIONAL |
| Rodriguez-PROJECT CONTROLLER | PROJECT CONTROLLER |
| Tiberti-TESTER | TESTER |
| Tiberti-ANALISTA LEGAL | ANALISTA LEGAL |

## Schedule

| ID | WBS | Task | Type | Duration | Start | Finish | Predecessors | Complete | Remaining | Total slack | Free slack | Calendar | Resources | Work | Actual work |
| --- | --- | --- | --- | --- | --- | --- | --- | --- | --- | --- | --- | --- | --- | --- | --- |
| 1 | 1 | **Análisis** |  | 13.23d? | 2015-04-12 A | 2015-11-30 |  | 91% | 1.22d? | 1.41d |  |  |  | 138h | 127h |
| 2 | 1.1 | **Riesgos** |  | 0.71d | 2015-04-12 A | 2015-04-25 A |  | 100% |  |  |  |  |  | 39h | 39h |
| 3 | 1.1.1 | Identificar los riegos |  | 2h | 2015-04-12 A | 2015-04-12 A |  | 100% |  |  |  |  | Budic-PROJECT MANAGER; Tiberti-ADMINISTRADOR DE BASE DE DATOS; Rodriguez-ARQUITECTO DE SOFTWARE; Rodriguez-PROJECT CONTROLLER; Budic-ANALISTA FUNCIONAL; Croci-DESAROLLADOR | 11h | 11h |
| 4 | 1.1.2 | Analizar los riegos |  | 3h | 2015-04-12 A | 2015-04-18 A | 3 | 100% |  |  |  |  | Budic-PROJECT MANAGER; Tiberti-ADMINISTRADOR DE BASE DE DATOS; Rodriguez-ARQUITECTO DE SOFTWARE; Rodriguez-PROJECT CONTROLLER; Budic-ANALISTA FUNCIONAL; Croci-DESAROLLADOR | 12h | 12h |
| 5 | 1.1.3 | Planificación de riesgos |  | 6h | 2015-04-18 A | 2015-04-25 A | 4 | 100% |  |  |  |  | Budic-PROJECT MANAGER; Rodriguez-PROJECT CONTROLLER; Budic-ANALISTA FUNCIONAL | 14h | 14h |
| 6 | 1.1.4 | Completar tabla de riesgos |  | 1h | 2015-04-25 A | 2015-04-25 A | 5 | 100% |  |  |  |  | Budic-PROJECT MANAGER; Rodriguez-PROJECT CONTROLLER | 2h | 2h |
| 7 | 1.2 | **Planificación** |  | 12.08d? | 2015-05-02 A | 2015-11-30 |  | 85% | 1.79d? | 1.41d |  |  |  | 68h | 57h |
| 8 | 1.2.1 | Identificar las tareas para cada entregable |  | 8h | 2015-05-02 A | 2015-05-10 A | 24 | 100% |  |  |  |  | Budic-PROJECT MANAGER | 8h | 8h |
| 9 | 1.2.2 | Definir las precedencias |  | 4h | 2015-05-10 A | 2015-05-16 A | 8 | 100% |  |  |  |  | Budic-PROJECT MANAGER | 4h | 4h |
| 10 | 1.2.3 | Estimar los tiempos de cada tarea |  | 6h | 2015-05-16 A | 2015-05-17 A | 9 | 100% |  |  |  |  | Budic-PROJECT MANAGER; Tiberti-ADMINISTRADOR DE BASE DE DATOS; Tiberti-ADMINISTRADOR DEL ENTORNO DE DESARROLLO; Tiberti-ANALISTA FUNCIONAL; Rodriguez-ARQUITECTO DE SOFTWARE; Budic-TESTER; Croci-DISEÑADOR DE EXPERIENCIA DE USUARIO | 17h | 17h |
| 11 | 1.2.4 | Calcular el camino crítico |  | 3h | 2015-05-30 A | 2015-05-30 A | 12 | 100% |  |  |  |  | Rodriguez-PROJECT CONTROLLER | 3h | 3h |
| 12 | 1.2.5 | Realizar diagrama de Gantt |  | 25h | 2015-05-17 A | 2015-05-26 A | 10 | 100% |  |  |  | AsociateYaContingencia | Rodriguez-PROJECT CONTROLLER | 25h | 25h |
| 13 | 1.2.6 | Inicio de Replanificación | milestone | 0h | 2015-11-26 | 2015-11-26 | 32 |  |  | 1.74d | 0.02d | AsociateYa Febrero |  |  |  |
| 14 | 1.2.7 | Estimar los tiempos de cada tarea |  | 1h? | 2015-11-27 | 2015-11-28 | 13 |  |  | 1.7d | 0d | AsociateYa Febrero | Croci-DESAROLLADOR; Budic-DESAROLLADOR; Rodriguez-DESAROLLADOR; Tiberti-ANALISTA FUNCIONAL | 4h |  |
| 15 | 1.2.8 | Realizar diagrama de Gantt |  | 7h? | 2015-11-28 | 2015-11-30 | 14 |  |  | 1.7d | 0d | AsociateYa Febrero | Rodriguez-PROJECT CONTROLLER | 7h |  |
| 16 | 1.3 | **Roles y Responsabilidades** |  | 0.21d | 2015-05-30 A | 2015-05-31 A |  | 100% |  |  |  |  |  | 7h | 7h |
| 17 | 1.3.1 | Identificar roles |  | 2h | 2015-05-30 A | 2015-05-30 A | 12 | 100% |  |  |  |  | Budic-PROJECT MANAGER; Tiberti-ANALISTA FUNCIONAL | 4h | 4h |
| 18 | 1.3.2 | Asignar responsabilidades a los roles |  | 3h | 2015-05-30 A | 2015-05-31 A | 17 | 100% |  |  |  |  | Budic-PROJECT MANAGER | 3h | 3h |
| 19 | 1.4 | **Habilidades y Competencias** |  | 0.35d | 2015-05-31 A | 2015-06-07 A |  | 100% |  |  |  |  |  | 6h | 6h |
| 20 | 1.4.1 | Asignar competencias a los roles |  | 6h | 2015-05-31 A | 2015-06-07 A | 18 | 100% |  |  |  |  | Budic-PROJECT MANAGER | 6h | 6h |
| 21 | 1.5 | **Comunicación** |  | 0.08d | 2015-06-07 A | 2015-06-07 A |  | 100% |  |  |  |  |  | 2h | 2h |
| 22 | 1.5.1 | Establecer canales de comunicación entre roles |  | 2h | 2015-06-07 A | 2015-06-07 A | 20 | 100% |  |  |  |  | Budic-PROJECT MANAGER | 2h | 2h |
| 23 | 1.6 | **WBS** |  | 0.44d | 2015-04-25 A | 2015-05-02 A |  | 100% |  |  |  |  |  | 16h | 16h |
| 24 | 1.6.1 | Definir entregables |  | 8h | 2015-04-25 A | 2015-05-02 A | 6 | 100% |  |  |  |  | Budic-PROJECT MANAGER; Tiberti-ANALISTA FUNCIONAL | 16h | 16h |

| ID | WBS | Task | Type | Duration | Start | Finish | Predecessors | Complete | Remaining | Total slack | Free slack | Constraint | Calendar | Resources | Work | Actual work |
| --- | --- | --- | --- | --- | --- | --- | --- | --- | --- | --- | --- | --- | --- | --- | --- | --- |
| 25 | 2 | **Diseño** |  | 12d? | 2015-05-10 A | 2015-12-06 |  | 88% | 1.44d? | 15.39d |  |  |  |  | 230h | 203h |
| 26 | 2.1 | **Casos de Uso** |  | 10.04d? | 2015-05-31 A | 2015-11-26 |  | 88% | 1.19d? | 1.41d |  |  |  |  | 121h | 110h |
| 27 | 2.1.1 | Identificar actores y funcionalidades |  | 25h | 2015-05-31 A | 2015-06-27 A | 24, 16 | 100% |  |  |  |  |  | Tiberti-ANALISTA FUNCIONAL; Budic-ANALISTA FUNCIONAL | 50h | 50h |
| 28 | 2.1.2 | Describir casos de uso |  | 48h | 2015-06-27 A | 2015-08-15 A | 27 | 100% |  |  |  |  |  | Tiberti-ANALISTA FUNCIONAL; Budic-PROJECT MANAGER | 50h | 50h |
| 29 | 2.1.3 | Describir las relaciones entre los actores y casos de uso |  | 9h | 2015-08-15 A | 2015-08-29 A | 27, 28 | 100% |  |  |  |  |  | Tiberti-ANALISTA FUNCIONAL; Budic-ANALISTA FUNCIONAL | 10h | 10h |
| 30 | 2.1.4 | Inicio Replanificacion de casos de uso | milestone | 0h? | 2015-11-17 | 2015-11-17 |  |  |  | 1.78d | 0d | start no earlier than 2015-11-17 | AsociateYa Febrero |  |  |  |
| 31 | 2.1.5 | Identificar actores y funcionalidades |  | 3h | 2015-11-17 | 2015-11-21 | 30 |  |  | 1.7d | 0d |  | AsociateYa Febrero | Tiberti-ANALISTA FUNCIONAL | 3h |  |
| 32 | 2.1.6 | Describir casos de uso |  | 8h | 2015-11-21 | 2015-11-26 | 31 |  |  | 1.7d | 0d |  | AsociateYa Febrero | Tiberti-ANALISTA FUNCIONAL | 8h |  |
| 33 | 2.2 | **DER** |  | 9.27d? | 2015-06-27 A | 2015-12-06 |  | 73% | 2.47d? | 15.39d |  |  |  |  | 54h | 38h |
| 34 | 2.2.1 | Definir entidades y sus atributos |  | 8h | 2015-06-27 A | 2015-07-04 A | 27 | 100% |  |  |  |  |  | Tiberti-ADMINISTRADOR DE BASE DE DATOS; Tiberti-ANALISTA FUNCIONAL; Rodriguez-ARQUITECTO DE SOFTWARE; Budic-PROJECT MANAGER | 24h | 24h |
| 35 | 2.2.2 | Describir las relaciones entre las entidades |  | 8h | 2015-07-05 A | 2015-08-08 A | 34 | 100% |  |  |  |  |  | Tiberti-ADMINISTRADOR DE BASE DE DATOS; Tiberti-ANALISTA FUNCIONAL | 8h | 8h |
| 36 | 2.2.3 | Normalizar DER |  | 6h | 2015-08-09 A | 2015-08-15 A | 35 | 100% |  |  |  |  |  | Tiberti-ADMINISTRADOR DE BASE DE DATOS | 6h | 6h |
| 37 | 2.2.4 | Inicio Replanificación de DER | milestone | 0h | 2015-11-30 | 2015-11-30 | 15 |  |  | 1.8d | 0.02d |  | AsociateYa Febrero |  |  |  |
| 38 | 2.2.5 | Definir entidades y sus atributos |  | 4h? | 2015-12-01 | 2015-12-05 | 37 |  |  | 1.7d | 0d |  | AsociateYa Febrero | Tiberti-ADMINISTRADOR DE BASE DE DATOS; Tiberti-ANALISTA FUNCIONAL; Rodriguez-ARQUITECTO DE SOFTWARE; Budic-PROJECT MANAGER | 12h |  |
| 39 | 2.2.6 | Describir las relaciones entre las entidades |  | 4h? | 2015-12-05 | 2015-12-06 | 38 |  |  | 1.7d | 0d |  | AsociateYa Febrero | Tiberti-ADMINISTRADOR DE BASE DE DATOS | 4h |  |
| 40 | 2.3 | **Maqueta del Front-End** |  | 0.52d | 2015-08-15 A | 2015-08-23 A |  | 100% |  |  |  |  |  |  | 10h | 10h |
| 41 | 2.3.1 | Diseñar disposición de elementos estéticamente |  | 10h | 2015-08-15 A | 2015-08-23 A | 36 | 100% |  |  |  |  |  | Croci-DISEÑADOR DE EXPERIENCIA DE USUARIO | 10h | 10h |
| 42 | 2.4 | **Documento De Arquitectura** |  | 0.44d | 2015-05-10 A | 2015-05-17 A |  | 100% |  |  |  |  |  |  | 8h | 8h |
| 43 | 2.4.1 | Definir arquitectura de software |  | 8h | 2015-05-10 A | 2015-05-17 A | 8 | 100% |  |  |  |  |  | Rodriguez-ARQUITECTO DE SOFTWARE | 8h | 8h |
| 44 | 2.5 | **Especificación de la BD** |  | 0.92d | 2015-08-29 A | 2015-09-13 A |  | 100% |  |  |  |  |  |  | 37h | 37h |
| 45 | 2.5.1 | Diseño de tablas de la BD |  | 6h | 2015-08-29 A | 2015-08-30 A | 36, 29 | 100% |  |  |  |  |  | Tiberti-ADMINISTRADOR DE BASE DE DATOS; Tiberti-ANALISTA FUNCIONAL; Rodriguez-ARQUITECTO DE SOFTWARE | 18h | 18h |
| 46 | 2.5.2 | Definir tipo y volumen de datos |  | 3h | 2015-09-05 A | 2015-09-06 A | 47 | 100% |  |  |  |  |  | Tiberti-ADMINISTRADOR DE BASE DE DATOS | 3h | 3h |
| 47 | 2.5.3 | Relaciones entre las tablas de la BD |  | 3h | 2015-08-30 A | 2015-09-05 A | 45 | 100% |  |  |  |  |  | Tiberti-ADMINISTRADOR DE BASE DE DATOS | 3h | 3h |
| 48 | 2.5.4 | Definir políticas de seguridad e integridad |  | 5h | 2015-09-06 A | 2015-09-13 A | 46 | 100% |  |  |  |  |  | Tiberti-ADMINISTRADOR DE BASE DE DATOS; Tiberti-ANALISTA FUNCIONAL; Rodriguez-ARQUITECTO DE SOFTWARE | 13h | 13h |

| ID | WBS | Task | Type | Duration | Start | Finish | Predecessors | Complete | Remaining | Total slack | Free slack | Calendar | Resources | Work | Actual work |
| --- | --- | --- | --- | --- | --- | --- | --- | --- | --- | --- | --- | --- | --- | --- | --- |
| 49 | 3 | **Desarrollo** |  | 30.83d? | 2015-05-17 A | 2016-03-16 |  | 80% | 6.07d? | 0.48d |  |  |  | 1119h | 886.19h |
| 50 | 3.1 | **Capacitacion** |  | 6.21d? | 2015-05-17 A | 2015-09-05 A |  | 100% |  |  |  |  |  | 290h | 290h |
| 51 | 3.1.1 | Inicio Capacitación en HTML |  | 10h | 2015-05-17 A | 2015-05-30 A | 43 | 100% |  |  |  |  | Budic-DESAROLLADOR | 10h | 10h |
| 52 | 3.1.2 | Inicio Capacitación en CSS |  | 10h | 2015-05-17 A | 2015-05-30 A | 43 | 100% |  |  |  |  | Budic-DESAROLLADOR | 10h | 10h |
| 53 | 3.1.3 | Inicio Capacitación en PHP |  | 20h | 2015-05-17 A | 2015-06-07 A | 43 | 100% |  |  |  |  | Rodriguez-DESAROLLADOR; Croci-DESAROLLADOR | 40h | 40h |
| 54 | 3.1.4 | Capacitación en HTML |  | 20h | 2015-05-30 A | 2015-07-19 A | 51 | 100% |  |  |  |  | Budic-DESAROLLADOR | 20h | 20h |
| 55 | 3.1.5 | Capacitación en CSS |  | 20h | 2015-05-30 A | 2015-06-27 A | 52 | 100% |  |  |  |  | Budic-DESAROLLADOR | 20h | 20h |
| 56 | 3.1.6 | Capacitación en PHP |  | 70h | 2015-06-07 A | 2015-09-05 A | 53 | 100% |  |  |  |  | Rodriguez-DESAROLLADOR | 70h | 70h |
| 57 | 3.1.7 | Capacitacion Symfony |  | 61.97h? | 2015-06-07 A | 2015-08-23 A | 51, 52, 53 | 100% |  |  |  |  | Budic-DESAROLLADOR; Croci-DESAROLLADOR; Rodriguez-DESAROLLADOR; Tiberti-DESAROLLADOR | 120h | 120h |
| 58 | 3.2 | **Escribir código de Plantillas** |  | 27.67d? | 2015-05-30 A | 2016-03-07 |  | 63% | 10.21d? | 0.95d |  |  |  | 171h | 101h |
| 59 | 3.2.1 | Inscribirse al portal |  | 10h? | 2015-05-30 A | 2015-06-13 A | 51, 52 | 100% |  |  |  |  | Budic-DESAROLLADOR; Croci-DESAROLLADOR | 10h | 10h |
| 60 | 3.2.2 | Autenticarse como usuario |  | 10h? | 2015-06-13 A | 2015-07-12 A | 59 | 100% |  |  |  |  | Budic-DESAROLLADOR; Croci-DESAROLLADOR | 10h | 10h |
| 61 | 3.2.3 | Modificar Usuario |  | 8h? | 2015-07-12 A | 2015-07-19 A | 60 | 100% |  |  |  |  | Budic-DESAROLLADOR; Croci-DESAROLLADOR | 10h | 10h |
| 62 | 3.2.4 | Dar de baja Usuario |  | 6h? | 2015-07-19 A | 2015-07-26 A | 61 | 100% |  |  |  |  | Budic-DESAROLLADOR; Croci-DESAROLLADOR | 6h | 6h |
| 63 | 3.2.5 | Inscribirse como emprendedor |  | 7h? | 2015-08-09 A | 2015-08-16 A | 104 | 100% |  |  |  |  | Budic-DESAROLLADOR; Croci-DESAROLLADOR | 7h | 7h |
| 64 | 3.2.6 | Aprobar inscripción como emprendedor |  | 5h? | 2015-08-16 A | 2015-09-05 A | 63 | 100% |  |  |  |  | Budic-DESAROLLADOR; Croci-DESAROLLADOR | 5h | 5h |
| 65 | 3.2.7 | Aplicar para crear emprendimiento |  | 5h? | 2015-09-05 A | 2015-09-06 A | 64 | 100% |  |  |  |  | Budic-DESAROLLADOR; Croci-DESAROLLADOR | 5h | 5h |
| 66 | 3.2.8 | Aprobar emprendimiento |  | 5.03h? | 2015-09-06 A | 2015-09-08 A | 65 | 100% |  |  |  | AsociateYaContingencia | Budic-DESAROLLADOR; Croci-DESAROLLADOR | 6h | 6h |
| 67 | 3.2.9 | Buscar/filtrar emprendimientos |  | 5h? | 2015-09-08 A | 2015-09-12 A | 66 | 100% |  |  |  | AsociateYaContingencia | Budic-DESAROLLADOR; Croci-DESAROLLADOR | 5h | 5h |
| 68 | 3.2.10 | Responder a inversor |  | 3h? | 2015-09-26 A | 2015-09-26 A | 105 | 100% |  |  |  | AsociateYaContingencia | Budic-DESAROLLADOR | 3h | 3h |
| 69 | 3.2.11 | Asociacion a emprendimiento |  | 4h? | 2015-09-26 A | 2015-09-27 A | 68 | 100% |  |  |  | AsociateYaContingencia | Budic-DESAROLLADOR | 4h | 4h |
| 70 | 3.2.12 | Consultar información a emprendedor |  | 8h? | 2015-09-27 A | 2015-10-10 A | 69 | 100% |  |  |  | AsociateYaContingencia | Budic-DESAROLLADOR; Croci-DESAROLLADOR | 8h | 8h |
| 71 | 3.2.13 | Realizar pago |  | 6h? | 2015-10-10 A | 2015-10-11 A | 70 | 100% |  |  |  | AsociateYaContingencia | Budic-DESAROLLADOR; Croci-DESAROLLADOR | 8h | 8h |
| 72 | 3.2.14 | Dar de baja emprendimiento (baja manual) |  | 6h? | 2015-10-11 A | 2015-10-17 A | 71 | 100% |  |  |  | AsociateYaContingencia | Budic-DESAROLLADOR; Croci-DESAROLLADOR | 8h | 8h |
| 73 | 3.2.15 | Cancelar emprendimiento (baja por tiempo) |  | 6h? | 2015-10-17 A | 2015-10-18 A | 72 | 100% |  |  |  | AsociateYaContingencia | Budic-DESAROLLADOR | 6h | 6h |
| 74 | 3.2.16 | Inicio Replanificacion de Plantillas | milestone | 0h? | 2015-12-06 | 2015-12-06 | 39 |  |  | 11.33d | 0d | AsociateYa Enero |  |  |  |
| 75 | 3.2.17 | Consultar información de inversiones (CU017) |  | 15h? | 2015-12-06 | 2015-12-20 | 74 |  |  | 9.99d | 0.23d | AsociateYa Enero | Budic-DESAROLLADOR; Tiberti-DESAROLLADOR | 19h |  |
| 76 | 3.2.18 | Consultar información de emprendimientos (CU018) |  | 15h? | 2015-12-27 | 2016-03-02 | 75 |  |  | 0.95d | 0d | AsociateYa Enero | Budic-DESAROLLADOR; Tiberti-DESAROLLADOR | 18h |  |
| 77 | 3.2.19 | Gestionar notificaciones (CU019) |  | 15h? | 2016-03-02 | 2016-03-03 | 76 |  |  | 0.95d | 0d | AsociateYa Enero | Budic-DESAROLLADOR; Tiberti-DESAROLLADOR | 20h |  |
| 78 | 3.2.20 | Presentar estado de resultados (CU015) |  | 10h? | 2016-03-04 | 2016-03-07 | 77 |  |  | 0.95d | 0d | AsociateYa Enero | Budic-DESAROLLADOR; Tiberti-DESAROLLADOR | 13h |  |

| ID | WBS | Task | Type | Duration | Start | Finish | Predecessors | Complete | Remaining | Total slack | Free slack | Calendar | Resources | Work | Actual work |
| --- | --- | --- | --- | --- | --- | --- | --- | --- | --- | --- | --- | --- | --- | --- | --- |
| 79 | 3.3 | **Escribir código PHP** |  | 29.51d? | 2015-06-07 A | 2016-03-16 |  | 76% | 7.06d? | 0d |  |  |  | 394h | 287.19h |
| 80 | 3.3.1 | Inscribirse al portal |  | 20h? | 2015-06-07 A | 2015-06-27 A | 53 | 100% |  |  |  |  | Croci-DESAROLLADOR; Rodriguez-DESAROLLADOR | 24h | 24h |
| 81 | 3.3.2 | Autenticarse como usuario |  | 15h? | 2015-07-04 A | 2015-07-18 A | 114 | 100% |  |  |  |  | Croci-DESAROLLADOR; Rodriguez-DESAROLLADOR | 18h | 18h |
| 82 | 3.3.3 | Modificar Usuario |  | 10h? | 2015-07-18 A | 2015-07-26 A | 81 | 100% |  |  |  |  | Croci-DESAROLLADOR; Rodriguez-DESAROLLADOR | 12h | 12h |
| 83 | 3.3.4 | Dar de baja Usuario |  | 10h? | 2015-07-26 A | 2015-08-08 A | 82 | 100% |  |  |  |  | Croci-DESAROLLADOR; Rodriguez-DESAROLLADOR | 12h | 12h |
| 84 | 3.3.5 | Inscribirse como emprendedor |  | 10h? | 2015-08-08 A | 2015-08-16 A | 83 | 100% |  |  |  |  | Croci-DESAROLLADOR; Rodriguez-DESAROLLADOR | 12h | 12h |
| 85 | 3.3.6 | Aprobar inscripción como emprendedor |  | 10h? | 2015-08-16 A | 2015-08-23 A | 84 | 100% |  |  |  |  | Croci-DESAROLLADOR; Rodriguez-DESAROLLADOR | 12h | 12h |
| 86 | 3.3.7 | Aplicar para crear emprendimiento |  | 10h? | 2015-08-23 A | 2015-09-05 A | 85 | 100% |  |  |  |  | Croci-DESAROLLADOR; Rodriguez-DESAROLLADOR | 12h | 12h |
| 87 | 3.3.8 | Aprobar emprendimiento |  | 8h? | 2015-09-12 A | 2015-09-13 A | 115 | 100% |  |  |  | AsociateYaContingencia | Croci-DESAROLLADOR; Rodriguez-DESAROLLADOR | 10h | 10h |
| 88 | 3.3.9 | Buscar/filtrar emprendimientos |  | 10h? | 2015-09-13 A | 2015-09-19 A | 87 | 100% |  |  |  | AsociateYaContingencia | Croci-DESAROLLADOR; Rodriguez-DESAROLLADOR | 13h | 13h |
| 89 | 3.3.10 | Responder a inversor |  | 8h? | 2015-09-19 A | 2015-09-20 A | 88 | 100% |  |  |  | AsociateYaContingencia | Croci-DESAROLLADOR; Rodriguez-DESAROLLADOR | 10h | 10h |
| 90 | 3.3.11 | Asociar a emprendimiento |  | 15h? | 2015-09-20 A | 2015-09-26 A | 89 | 100% |  |  |  | AsociateYaContingencia | Croci-DESAROLLADOR; Rodriguez-DESAROLLADOR | 25h | 25h |
| 91 | 3.3.12 | Consultar información a emprendedor |  | 10h? | 2015-09-27 A | 2015-10-03 A | 116 | 100% |  |  |  | AsociateYaContingencia | Croci-DESAROLLADOR; Rodriguez-DESAROLLADOR | 13h | 13h |
| 92 | 3.3.13 | Realizar Pago |  | 42.01h? | 2015-10-03 A | 2015-10-17 A | 91 | 100% |  |  |  | AsociateYaContingencia | Croci-DESAROLLADOR; Rodriguez-DESAROLLADOR | 62h | 62h |
| 93 | 3.3.14 | Dar de baja empremdimiento (baja manual) |  | 20h? | 2015-10-17 A | 2015-10-24 A | 92 | 100% |  |  |  | AsociateYaContingencia | Croci-DESAROLLADOR; Rodriguez-DESAROLLADOR | 24h | 24h |
| 94 | 3.3.15 | Cancelar emprendimiento (baja por tiempo) |  | 24.99h? | 2015-10-24 A | 2015-11-01 A | 93 | 100% |  |  |  | AsociateYaContingencia | Rodriguez-DESAROLLADOR; Croci-DESAROLLADOR | 25h | 25h |
| 95 | 3.3.16 | Inicio Replanificacion de PHP | milestone | 0h? | 2015-12-06 | 2015-12-06 | 39 |  |  | 11.83d | 0d | AsociateYa Enero |  |  |  |
| 96 | 3.3.17 | Consultar información de inversiones (CU017) |  | 12h? | 2015-12-06 | 2015-12-20 | 95 |  |  | 10.49d | 0d | AsociateYa Enero | Croci-DESAROLLADOR; Rodriguez-DESAROLLADOR | 18h |  |
| 97 | 3.3.18 | Consultar información de emprendimientos (CU018) |  | 8h | 2015-12-20 | 2015-12-27 | 96 |  |  | 9.83d | 0d | AsociateYa Enero | Croci-DESAROLLADOR; Rodriguez-DESAROLLADOR | 14h |  |
| 98 | 3.3.19 | Gestionar notificaciones (CU019) |  | 20h? | 2015-12-27 | 2016-03-03 | 97 |  |  | 1.45d | 0d | AsociateYa Enero | Croci-DESAROLLADOR; Rodriguez-DESAROLLADOR | 30h |  |
| 99 | 3.3.20 | Validar Pago Realizado (CU020) |  | 12h? | 2016-03-03 | 2016-03-04 | 98 |  |  | 1.45d | 0d | AsociateYa Enero | Croci-DESAROLLADOR; Rodriguez-DESAROLLADOR | 20h |  |
| 100 | 3.3.21 | Presentar estado de resultados (CU015) |  | 21.01h? | 2015-11-01 A | 2016-03-16 | 99 | 10% | 18.81h? | 0d |  | AsociateYa Enero | Croci-DESAROLLADOR; Rodriguez-DESAROLLADOR | 28h | 3.19h |
| 101 | 3.4 | **Escribir script de la base de datos** |  | 1.15d? | 2015-09-13 A | 2015-10-03 A |  | 100% |  |  |  |  |  | 20h | 20h |
| 102 | 3.4.1 | Script inicial |  | 17h? | 2015-09-13 A | 2015-10-03 A | 48 | 100% |  |  |  |  | Rodriguez-DESAROLLADOR; Rodriguez-ARQUITECTO DE SOFTWARE; Tiberti-ADMINISTRADOR DE BASE DE DATOS | 20h | 20h |

| ID | WBS | Task | Duration | Start | Finish | Predecessors | Complete | Remaining | Total slack | Free slack | Constraint | Calendar | Resources | Work | Actual work |
| --- | --- | --- | --- | --- | --- | --- | --- | --- | --- | --- | --- | --- | --- | --- | --- |
| 103 | 3.5 | **Revisión de pares de Plantillas** | 24.75d? | 2015-07-26 A | 2016-03-08 |  | 40% | 14.85d? | 2.47d |  |  |  |  | 40h | 16h |
| 104 | 3.5.1 | Revision 1 | 4h? | 2015-07-26 A | 2015-08-09 A | 62 | 100% |  |  |  |  |  | Tiberti-DESAROLLADOR; Rodriguez-DESAROLLADOR | 4h | 4h |
| 105 | 3.5.2 | Revision 2 | 4h? | 2015-09-12 A | 2015-09-26 A | 67 | 100% |  |  |  |  |  | Tiberti-DESAROLLADOR; Rodriguez-DESAROLLADOR | 4h | 4h |
| 106 | 3.5.3 | Revision 3 | 4h? | 2015-10-17 A | 2015-10-18 A | 72 | 100% |  |  |  |  | AsociateYaContingencia | Tiberti-DESAROLLADOR; Rodriguez-DESAROLLADOR | 4h | 4h |
| 107 | 3.5.4 | Revision 4 | 4h? | 2015-10-18 A | 2015-10-27 A | 73 | 100% |  |  |  |  | AsociateYaContingencia | Croci-DESAROLLADOR; Rodriguez-DESAROLLADOR | 4h | 4h |
| 108 | 3.5.5 | Revision 5 (CU017 - CU018) | 8h? | 2016-03-02 | 2016-03-04 | 75, 76 |  |  | 3.14d |  |  | AsociateYa Enero | Croci-DESAROLLADOR; Rodriguez-DESAROLLADOR | 8h |  |
| 109 | 3.5.6 | Revision 6 (CU019) | 0.33d? | 2016-03-04 | 2016-03-08 | 77 |  |  | 2.64d |  |  | AsociateYa Enero | Croci-DESAROLLADOR; Rodriguez-DESAROLLADOR | 8h |  |
| 110 | 3.5.7 | Revision 7 (CU015) | 8h? | 2016-03-07 | 2016-03-08 | 78 |  |  | 0.95d | 0d |  | AsociateYa Enero | Croci-DESAROLLADOR; Rodriguez-DESAROLLADOR | 8h |  |
| 111 | 3.6 | **Revisión de pares de la base de datos** | 1.71d? | 2015-10-03 A | 2015-11-01 A |  | 100% |  |  |  |  |  |  | 18h | 18h |
| 112 | 3.6.1 | Revision 1 | 14.02h? | 2015-10-03 A | 2015-11-01 A | 102 | 100% |  |  |  |  |  | Budic-DESAROLLADOR; Croci-DESAROLLADOR | 18h | 18h |
| 113 | 3.7 | **Revisión de pares de PHP** | 28.53d? | 2015-06-27 A | 2016-03-16 |  | 43% | 16.41d? | 0d |  |  |  |  | 66h | 34h |
| 114 | 3.7.1 | Revision 1 | 5h? | 2015-06-27 A | 2015-07-04 A | 80 | 100% |  |  |  |  |  | Tiberti-DESAROLLADOR; Rodriguez-DESAROLLADOR | 10h | 10h |
| 115 | 3.7.2 | Revision 2 | 6h? | 2015-09-05 A | 2015-09-12 A | 86 | 100% |  |  |  |  |  | Rodriguez-DESAROLLADOR; Tiberti-DESAROLLADOR | 12h | 12h |
| 116 | 3.7.3 | Revision 3 | 6h? | 2015-09-26 A | 2015-09-27 A | 90 | 100% |  |  |  |  | AsociateYaContingencia | Rodriguez-DESAROLLADOR; Tiberti-DESAROLLADOR | 12h | 12h |
| 117 | 3.7.4 | Revision 4 | 4h? | 2016-03-16 | 2016-03-16 | 100 |  |  | 0d |  |  | AsociateYaContingencia | Rodriguez-DESAROLLADOR; Tiberti-DESAROLLADOR | 8h |  |
| 118 | 3.7.5 | Revision 5 (CU017 - CU018) | 7h? | 2015-12-27 | 2016-03-02 | 96, 97 |  |  | 3.45d |  |  | AsociateYa Enero | Rodriguez-DESAROLLADOR; Tiberti-DESAROLLADOR | 8h |  |
| 119 | 3.7.6 | Revision 6 (CU019) | 8h? | 2016-03-03 | 2016-03-07 | 98 |  |  | 2.33d |  |  | AsociateYa Enero | Rodriguez-DESAROLLADOR; Tiberti-DESAROLLADOR | 8h |  |
| 120 | 3.7.7 | Revision 7 (CU015) | 4h? | 2016-03-04 | 2016-03-07 | 99 |  |  | 1.45d | 0.5d |  | AsociateYa Enero | Rodriguez-DESAROLLADOR; Tiberti-DESAROLLADOR | 8h |  |
| 121 | 3.8 | **Promoción** | 1.06d | 2015-08-23 A | 2015-09-12 A |  | 100% |  |  |  |  |  |  | 28h | 28h |
| 122 | 3.8.1 | Realizar presentación comercial | 10h | 2015-08-30 A | 2015-09-12 A | 123 | 100% |  |  |  |  |  | Tiberti-ANALISTA FUNCIONAL; Croci-DISEÑADOR DE EXPERIENCIA DE USUARIO; Budic-PROJECT MANAGER | 20h | 20h |
| 123 | 3.8.2 | Realizar poster comercial | 8h | 2015-08-23 A | 2015-08-30 A | 40 | 100% |  |  |  | start no earlier than 2015-07-22 |  | Croci-DISEÑADOR DE EXPERIENCIA DE USUARIO; Budic-PROJECT MANAGER | 8h | 8h |
| 124 | 3.9 | **Legales** | 1.85d? | 2015-09-13 A | 2015-10-17 A |  | 100% |  |  |  |  |  |  | 92h | 92h |
| 125 | 3.9.1 | Desarrollar contrato Fideicomiso | 40h? | 2015-09-20 A | 2015-10-04 A | 128 | 100% |  |  |  |  |  | Tiberti-ANALISTA LEGAL | 40h | 40h |
| 126 | 3.9.2 | Desarrollar contrato de inversion | 12h? | 2015-10-04 A | 2015-10-10 A | 128 | 100% |  |  |  |  |  | Tiberti-ANALISTA LEGAL | 12h | 12h |
| 127 | 3.9.3 | Desarrollar términos y condiciones | 20h? | 2015-10-10 A | 2015-10-17 A | 125, 126 | 100% |  |  |  |  |  | Tiberti-ANALISTA LEGAL | 20h | 20h |
| 128 | 3.9.4 | Desarrollar reglas de negocio y aspectos legales | 20h? | 2015-09-13 A | 2015-09-20 A | 25 | 100% |  |  |  |  |  | Tiberti-ANALISTA LEGAL | 20h | 20h |

| ID | WBS | Task | Type | Duration | Start | Finish | Predecessors | Complete | Remaining | Total slack | Free slack | Calendar | Resources | Work | Actual work |
| --- | --- | --- | --- | --- | --- | --- | --- | --- | --- | --- | --- | --- | --- | --- | --- |
| 129 | 4 | **Testing** |  | 31.73d? | 2015-04-13 A | 2016-03-11 |  | 27% | 23.12d? | 1.43d |  |  |  | 142h | 60h |
| 130 | 4.1 | Armar el plan de pruebas |  | 12h | 2015-09-06 A | 2015-09-20 A | 131 | 100% |  |  |  |  | Tiberti-ANALISTA FUNCIONAL; Budic-PROJECT MANAGER | 20h | 20h |
| 131 | 4.2 | Definir los casos de prueba |  | 13.6h | 2015-08-29 A | 2015-09-06 A | 29, 36 | 100% |  |  |  |  | Tiberti-ANALISTA FUNCIONAL; Budic-PROJECT MANAGER | 16h | 16h |
| 132 | 4.3 | Inicio Replanificacion Testing |  | 24h? | 2015-12-06 | 2015-12-20 | 39 |  |  | 8.01d | 0d | AsociateYa Febrero |  |  |  |
| 133 | 4.4 | Armar el plan de pruebas |  | 12h? | 2015-12-20 | 2015-12-30 | 132 |  |  | 7.87d | 0.02d | AsociateYa Febrero | Tiberti-ANALISTA FUNCIONAL | 12h |  |
| 134 | 4.5 | Definir los casos de prueba |  | 24h? | 2015-12-31 | 2016-03-03 | 133 |  |  | 3.45d |  | AsociateYa Febrero | Tiberti-ANALISTA FUNCIONAL | 24h |  |
| 135 | 4.6 | **Ejecutar los casos de prueba** |  | 23.46d? | 2015-11-07 A | 2016-03-11 |  | 38% | 14.66d? | 0.95d |  | AsociateYaContingencia |  | 54h | 18h |
| 136 | 4.6.1 | Ciclo #1 |  | 4h? | 2015-11-07 A | 2015-11-08 A | 106, 112, 117 | 100% |  |  |  |  | Budic-TESTER; Tiberti-TESTER | 6h | 6h |
| 137 | 4.6.2 | Ciclo #2 |  | 4h? | 2015-11-08 A | 2015-11-08 A | 146 | 100% |  |  |  |  | Budic-TESTER; Tiberti-TESTER | 6h | 6h |
| 138 | 4.6.3 | Ciclo #3 |  | 4h? | 2015-11-08 A | 2015-11-11 A | 147 | 100% |  |  |  |  | Budic-TESTER; Tiberti-TESTER | 6h | 6h |
| 139 | 4.6.4 | Inicio Replanificacion de ejecución casos de prueba | milestone | 0h | 2016-03-08 | 2016-03-08 | 110, 120 |  |  | 0.95d | 0d | AsociateYa Febrero |  |  |  |
| 140 | 4.6.5 | Ciclo #4 |  | 4h? | 2016-03-08 | 2016-03-09 | 139 |  |  | 0.95d | 0d | AsociateYa Febrero | Budic-TESTER; Tiberti-TESTER | 6h |  |
| 141 | 4.6.6 | Ciclo #5 |  | 4h? | 2016-03-09 | 2016-03-09 | 150 |  |  | 0.95d | 0d | AsociateYa Febrero | Budic-TESTER; Tiberti-TESTER | 6h |  |
| 142 | 4.6.7 | Ciclo #6 |  | 4h? | 2016-03-10 | 2016-03-10 | 151 |  |  | 0.95d | 0d | AsociateYa Febrero | Budic-TESTER; Tiberti-TESTER | 8h |  |
| 143 | 4.6.8 | Ciclo #7 |  | 4h? | 2016-03-10 | 2016-03-11 | 152 |  |  | 0.95d | 0d | AsociateYa Febrero | Budic-TESTER; Tiberti-TESTER | 8h |  |
| 144 | 4.6.9 | Ciclo #8 |  | 4h? | 2016-03-11 | 2016-03-11 | 153 |  |  | 0.95d | 0d | AsociateYa Febrero | Budic-TESTER; Tiberti-TESTER | 8h |  |
| 145 | 4.7 | **Documentar resultados de las pruebas** |  | 48d? | 2015-04-13 A | 2016-03-11 |  | 9% | 43.5d? | 1.43d |  | AsociateYaContingencia |  | 16h | 6h |
| 146 | 4.7.1 | Ciclo #1 |  | 1h? | 2015-11-08 A | 2015-11-08 A | 136 | 100% |  |  |  |  | Budic-TESTER; Tiberti-TESTER | 2h | 2h |
| 147 | 4.7.2 | Ciclo #2 |  | 1h? | 2015-11-08 A | 2015-11-08 A | 137 | 100% |  |  |  |  | Budic-TESTER; Tiberti-TESTER | 2h | 2h |
| 148 | 4.7.3 | Ciclo #3 |  | 1h? | 2015-11-11 A | 2015-11-12 A | 138 | 100% |  |  |  |  | Budic-TESTER; Tiberti-TESTER | 2h | 2h |
| 149 | 4.7.4 | Inicio Replanificacion de documentación de pruebas |  | 24h? | 2015-04-13 | 2015-04-15 |  |  |  | 60.47d |  | AsociateYa Febrero |  |  |  |
| 150 | 4.7.5 | Ciclo #4 |  | 1h? | 2016-03-09 | 2016-03-09 | 140 |  |  | 0.95d | 0d | AsociateYa Febrero | Budic-TESTER; Tiberti-TESTER | 2h |  |
| 151 | 4.7.6 | Ciclo #5 |  | 1h? | 2016-03-10 | 2016-03-10 | 141 |  |  | 0.95d | 0d | AsociateYa Febrero | Budic-TESTER; Tiberti-TESTER | 2h |  |
| 152 | 4.7.7 | Ciclo #6 |  | 1h? | 2016-03-10 | 2016-03-10 | 142 |  |  | 0.95d | 0d | AsociateYa Febrero | Budic-TESTER; Tiberti-TESTER | 2h |  |
| 153 | 4.7.8 | Ciclo #7 |  | 1h? | 2016-03-11 | 2016-03-11 | 143 |  |  | 0.95d | 0d | AsociateYa Febrero | Budic-TESTER; Tiberti-TESTER | 2h |  |
| 154 | 4.7.9 | Ciclo #8 |  | 1h? | 2016-03-11 | 2016-03-11 | 144 |  |  | 0.95d | 0d | AsociateYa Febrero | Budic-TESTER; Tiberti-TESTER | 2h |  |

| ID | WBS | Task | Duration | Start | Finish | Predecessors | Total slack | Calendar | Resources | Work |
| --- | --- | --- | --- | --- | --- | --- | --- | --- | --- | --- |
| 155 | 5 | **Manuales** | 0.42d | 2016-03-14 | 2016-03-15 |  | 1.01d |  |  | 10h |
| 156 | 5.1 | Redactar manual de usuario | 10h | 2016-03-14 | 2016-03-15 | 154 | 1.01d | AsociateYaContingencia | Croci-DISEÑADOR DE EXPERIENCIA DE USUARIO | 10h |
| 157 | 6 | **Finalización del Proyecto** | 0.48d | 2016-03-16 | 2016-03-18 |  | 0d | AsociateYaContingencia |  | 28h |
| 158 | 6.1 | Analizar errores cometidos | 1h | 2016-03-16 | 2016-03-16 | 6, 12, 18, 20, 22, 24, 29, 36, 41, 43, 48, 113, 123, 154 | 0d | AsociateYaContingencia | Tiberti-ADMINISTRADOR DE BASE DE DATOS; Tiberti-ADMINISTRADOR DEL ENTORNO DE DESARROLLO; Tiberti-ANALISTA FUNCIONAL; Rodriguez-ARQUITECTO DE SOFTWARE; Tiberti-DESAROLLADOR; Croci-DISEÑADOR DE EXPERIENCIA DE USUARIO; Budic-PROJECT MANAGER; Budic-TESTER | 8h |
| 159 | 6.2 | Reflexionar sobre la experiencia realizada | 0.5h | 2016-03-16 | 2016-03-17 | 158 | 0d | AsociateYaContingencia | Tiberti-ADMINISTRADOR DE BASE DE DATOS; Tiberti-ADMINISTRADOR DEL ENTORNO DE DESARROLLO; Tiberti-ANALISTA FUNCIONAL; Rodriguez-ARQUITECTO DE SOFTWARE; Tiberti-DESAROLLADOR; Croci-DISEÑADOR DE EXPERIENCIA DE USUARIO; Budic-PROJECT MANAGER; Budic-TESTER | 4h |
| 160 | 6.3 | Documentación de cierre de proyecto | 6h | 2016-03-17 | 2016-03-17 | 159 | 0d | AsociateYaContingencia | Tiberti-ANALISTA FUNCIONAL; Budic-PROJECT MANAGER | 12h |
| 161 | 6.4 | Cerrar el proyecto | 4h | 2016-03-17 | 2016-03-18 | 160 | 0d | AsociateYaContingencia | Budic-PROJECT MANAGER | 4h |
